# Projeto SCM

How a schedule from MS Project changed from version to version. A marks actual dates.

## Version 1 (saved 2018-05-30, file Cronograma Projeto SCM versão 1.0.mpp)

Note of the change: Merge branch 'Release00'

| ID | WBS | Task | Duration | Start | Finish | Predecessors | Total float | Constraint |
| --- | --- | --- | --- | --- | --- | --- | --- | --- |
| 1 | 1 | **Projeto SCM** | 44d? | 2018-05-26 | 2018-07-27 |  | 0d |  |
| 2 | 1.1 | **Prospecção** | 8d | 2018-05-26 | 2018-06-06 |  | 0d |  |
| 3 |  | Estudar Dominio | 2.5d | 2018-05-26 | 2018-05-27 |  | 0d | start no earlier than 2018-05-25 |
| 4 |  | Reunir com Fornecedor de Requisitos | 2.88d | 2018-05-27 | 2018-05-29 | 3 | 0d |  |
| 5 |  | Redigir DRE Preliminar | 2.5d | 2018-05-29 | 2018-05-30 | 4 | 0d |  |
| 6 |  | Revisar DRE Preliminar | 1.38d | 2018-05-30 | 2018-05-31 | 5 | 0d |  |
| 7 | 1.1.5 | **Estimativa.Prel.Tam** | 1d | 2018-06-01 | 2018-06-03 |  | 0d |  |
| 8 |  | Estimar tamanho do projeto | 1.38d | 2018-06-01 | 2018-06-02 | 6 | 0d |  |
| 9 |  | Revisar Estimativa de Tamanho do projeto | 1.5d | 2018-06-02 | 2018-06-03 | 8 | 0d |  |
| 10 | 1.1.6 | **Estimativa.Prel.Crono** | 3d | 2018-06-04 | 2018-06-06 |  | 0d |  |
| 11 |  | Elaborar Cronograma Preliminar | 1.38d | 2018-06-04 | 2018-06-05 | 9 | 0d |  |
| 12 |  | Revisar Cronograma Preliminar | 1.5d | 2018-06-05 | 2018-06-06 | 11 | 0d |  |
| 13 | 1.2 | **Análise** | 10.62d? | 2018-06-07 | 2018-06-21 | 12 | 0d |  |
| 14 |  | Reunir com Fornecedor de Requisitos | 1d | 2018-06-07 | 2018-06-08 | 6 | 0d |  |
| 15 | 1.2.2 | **DRE** | 3d | 2018-06-08 | 2018-06-12 |  | 0d |  |
| 16 |  | Redigir DRE Definitivo | 2.62d | 2018-06-08 | 2018-06-12 | 14 | 0d |  |
| 17 |  | Revisar DRE Definitivo | 0.38d | 2018-06-12 | 2018-06-12 | 16 | 0d |  |
| 18 | 1.2.3 | **MRB** | 2.5d? | 2018-06-13 | 2018-06-18 |  | 2.5d |  |
| 19 |  | Elaborar MRB | 1.25d | 2018-06-13 | 2018-06-17 | 17 | 2.5d |  |
| 20 |  | Revisar MRB | 0.25d? | 2018-06-18 | 2018-06-18 | 19 | 3d |  |
| 21 | 1.2.4 | **Estimativa final** | 2.25d? | 2018-06-13 | 2018-06-15 |  | 0.38d |  |
| 22 |  | Elaborar estimativa final | 1.25d? | 2018-06-13 | 2018-06-15 | 17 | 0.38d |  |
| 23 | 1.2.5 | **Cronograma definitivo** | 4.38d? | 2018-06-15 | 2018-06-21 |  | 0.25d |  |
| 24 |  | Atualizar Cronograma | 0.38d? | 2018-06-15 | 2018-06-16 | 22 | 0d |  |
| 25 |  | Revisar Cronograma | 1d | 2018-06-17 | 2018-06-21 | 24 | 0d |  |
| 26 | 1.3 | **Projeto** | 3.04d? | 2018-06-21 | 2018-06-26 | 25 | 0.25d |  |
| 27 | 1.3.1 | **Diagrama de Classes** | 1.38d? | 2018-06-21 | 2018-06-24 |  | 0.25d |  |
| 28 |  | Elaborar diagrama de Classes | 0.62d? | 2018-06-21 | 2018-06-22 | 20 | 0.25d |  |
| 29 |  | Revisar Diagrama de Classes | 0.12d? | 2018-06-23 | 2018-06-23 | 28 | 0d |  |
| 30 |  | Atualizar MRB | 0.25d | 2018-06-23 | 2018-06-24 | 29 | 0d |  |
| 31 | 1.3.2 | **Modelo Entidade Relacionamento** | 1.67d | 2018-06-24 | 2018-06-26 |  | 0.33d |  |
| 32 |  | Elaborar MER | 0.38d | 2018-06-24 | 2018-06-25 | 30 | 0.38d |  |
| 33 |  | Revisar MER | 0.25d | 2018-06-25 | 2018-06-26 | 32 | 0.33d |  |
| 34 | 1.4 | **Implementação** | 22.33d? | 2018-06-26 | 2018-07-27 | 30 | 0d |  |
| 35 |  | Estudo da ferramenta de desenvolvimento | 1.25d? | 2018-06-26 | 2018-07-01 | 33 | 0d |  |
| 36 | 1.4.2 | **Release 01** | 6.38d? | 2018-07-01 | 2018-07-10 |  | 0d |  |
| 37 | 1.4.2.1 | **CRUDE Funcionário** | 4d | 2018-07-01 | 2018-07-05 |  | 0d |  |
| 38 |  | Implementar RFS01 | 0.62d | 2018-07-01 | 2018-07-02 | 35 | 0d |  |
| 39 |  | Implementar RFS02 | 0.62d | 2018-07-02 | 2018-07-03 | 38 | 0d |  |
| 40 |  | Implementar RFS03 | 0.62d | 2018-07-03 | 2018-07-04 | 39 | 0d |  |
| 41 |  | Implementar RFS04 | 0.62d | 2018-07-04 | 2018-07-05 | 40 | 0d |  |
| 42 | 1.4.2.2 | **CRUDE Usuário** | 2.38d? | 2018-07-06 | 2018-07-10 |  | 11d |  |
| 43 |  | Implementar RFS05 | 0.62d? | 2018-07-06 | 2018-07-07 | 41 | 10.12d |  |
| 44 |  | Implementar RFS06 | 0.62d? | 2018-07-07 | 2018-07-08 | 43 | 10.12d |  |
| 45 |  | Implementar RFS07 | 0.62d? | 2018-07-08 | 2018-07-09 | 44 | 11.25d |  |
| 46 |  | Implementar RFS08 | 0.62d? | 2018-07-09 | 2018-07-10 | 45 | 12d |  |
| 47 | 1.4.2.3 | **Teste** | 0d? | 2018-07-06 | 2018-07-06 |  | 0d |  |
| 48 |  | Testar CRUDE Funcionário | 0.25d? | 2018-07-06 | 2018-07-06 | 41 | 0d |  |
| 49 |  | Testar CRUDE Usuário | 0.25d? | 2018-07-06 | 2018-07-06 | 48 | 0d |  |
| 50 | 1.4.3 | **Release 02** | 6d? | 2018-07-06 | 2018-07-15 |  | 1d |  |
| 51 | 1.4.3.1 | **CRUDE Cliente** | 2d? | 2018-07-06 | 2018-07-10 |  | 0d |  |
| 52 |  | Implementar RFS 09 | 0.62d? | 2018-07-06 | 2018-07-07 | 49 | 0d |  |
| 53 |  | Implementar RFS 10 | 0.62d | 2018-07-07 | 2018-07-08 | 52 | 0d |  |
| 54 |  | Implementar RFS 11 | 0.62d | 2018-07-08 | 2018-07-09 | 53 | 0d |  |
| 55 |  | Implementar RFS 12 | 0.62d | 2018-07-09 | 2018-07-10 | 54 | 0d |  |
| 56 | 1.4.3.2 | **CRUDE Fornecedor** | 3.5d | 2018-07-10 | 2018-07-15 |  | 8.5d |  |
| 57 |  | Implementar RFS 13 | 0.62d | 2018-07-10 | 2018-07-11 | 55 | 7.38d |  |
| 58 |  | Implementar RFS 14 | 0.62d | 2018-07-11 | 2018-07-12 | 57 | 7.25d |  |
| 59 |  | Implementar RFS 15 | 0.62d | 2018-07-12 | 2018-07-13 | 58 | 7.75d |  |
| 60 |  | Implementar RFS 16 | 0.62d | 2018-07-13 | 2018-07-15 | 59 | 7.75d |  |
| 61 | 1.4.3.3 | **Teste** | 0.38d? | 2018-07-11 | 2018-07-11 |  | 0d |  |
| 62 |  | Teste CRUDE Cliente | 0.25d? | 2018-07-11 | 2018-07-11 | 55 | 0d |  |
| 63 |  | Teste CRUDE Fornecedor | 0.25d? | 2018-07-11 | 2018-07-11 | 62 | 0d |  |
| 64 | 1.4.4 | **Release 03** | 5.75d? | 2018-07-12 | 2018-07-19 |  | 0d |  |
| 65 | 1.4.4.1 | **CRUDE Pedido** | 2d | 2018-07-12 | 2018-07-15 |  | 0d |  |
| 66 |  | Implementar RFS 17 | 0.62d | 2018-07-12 | 2018-07-12 | 63 | 0d |  |
| 67 |  | Implementar RFS 18 | 0.62d | 2018-07-13 | 2018-07-13 | 66 | 0d |  |
| 68 |  | Implementar RFS 19 | 0.62d | 2018-07-14 | 2018-07-14 | 67 | 0d |  |
| 69 |  | Implementar RFS 20 | 0.62d | 2018-07-15 | 2018-07-15 | 68 | 0d |  |
| 70 | 1.4.4.2 | **CRUDE Produto** | 3.38d | 2018-07-15 | 2018-07-19 |  | 0d |  |

| ID | WBS | Task | Duration | Start | Finish | Predecessors | Total float |
| --- | --- | --- | --- | --- | --- | --- | --- |
| 71 |  | Implementar RFS 21 | 0.62d | 2018-07-15 | 2018-07-16 | 69 | 0d |
| 72 |  | Implementar RFS 22 | 0.62d | 2018-07-16 | 2018-07-17 | 71 | 0d |
| 73 |  | Implementar RFS 23 | 0.62d | 2018-07-17 | 2018-07-18 | 72 | 0d |
| 74 |  | Implementar RFS 24 | 0.62d | 2018-07-18 | 2018-07-19 | 73 | 0d |
| 75 | 1.4.4.3 | **Teste** | 3.75d? | 2018-07-15 | 2018-07-19 |  | 3.75d |
| 76 |  | Teste CRUDE Pedido | 0.25d? | 2018-07-15 | 2018-07-15 | 69 | 8.75d |
| 77 |  | Teste CRUDE Produto | 0.25d? | 2018-07-19 | 2018-07-19 | 74 | 0.25d |
| 78 | 1.4.5 | **Release 04** | 4.5d? | 2018-07-19 | 2018-07-26 |  | 0.12d |
| 79 |  | Implementar RFS 25 | 0.75d? | 2018-07-19 | 2018-07-20 | 77 | 0d |
| 80 |  | Implementar RFS 26 | 0.75d | 2018-07-21 | 2018-07-22 | 79 | 0d |
| 81 |  | Implementar RFS 27 | 0.75d | 2018-07-23 | 2018-07-24 | 80 | 0d |
| 82 |  | Implementar RFS 28 | 0.75d | 2018-07-24 | 2018-07-25 | 81 | 0d |
| 83 |  | Implementar RFS 29 | 0.75d | 2018-07-25 | 2018-07-26 | 82 | 0.12d |
| 84 | 1.4.6 | **Teste** | 4d? | 2018-07-21 | 2018-07-27 |  | 0d |
| 85 |  | Testar RFS 25 | 0.25d? | 2018-07-21 | 2018-07-21 | 79 | 3.25d |
| 86 |  | Testar RFS 26 | 0.25d? | 2018-07-23 | 2018-07-23 | 80 | 3.12d |
| 87 |  | Testar RFS 27 | 0.25d? | 2018-07-24 | 2018-07-24 | 81 | 2.25d |
| 88 |  | Testar RFS 28 | 0.25d? | 2018-07-25 | 2018-07-25 | 82 | 1.25d |
| 89 |  | Testar RFS 29 | 0.25d? | 2018-07-27 | 2018-07-27 | 83 | 0d |

## Version 2 (saved 2018-06-13, file Cronograma Projeto SCM versão 1.1.mpp)

Note of the change: Merge remote-tracking branch 'origin/Release01'

Last finish 2018-07-27 → 2018-07-28 (+1d). Complete tasks 0 → 29.

Changed:

| ID | Task | Start | Finish | Duration | Complete | Total float | Predecessors | Other |
| --- | --- | --- | --- | --- | --- | --- | --- | --- |
| 1 | **Projeto SCM** | 2018-05-26 → 2018-05-26 00:00 A | 2018-07-27 → 2018-07-28 02:00 (+1d) | 44d? → 45d? | 0% → 56% |  |  |  |
| 2 | **Prospecção** | 2018-05-26 → 2018-05-26 00:00 A | 2018-06-06 → 2018-06-06 18:00 A |  | 0% → 100% | 0d → none |  |  |
| 3 | Estudar Dominio | 2018-05-26 → 2018-05-26 00:00 A | 2018-05-27 → 2018-05-27 03:00 A | 2.5d → 1d | 0% → 100% | 0d → none |  | constraint start no earlier than 2018-05-25 → start no earlier than 2018-05-25 09:00 |
| 4 | Reunir com Fornecedor de Requisitos | 2018-05-27 → 2018-05-27 03:00 A | 2018-05-29 → 2018-05-29 01:00 A | 2.88d → 1d | 0% → 100% | 0d → none |  |  |
| 5 | Redigir DRE Preliminar | 2018-05-29 → 2018-05-29 01:00 A | 2018-05-30 → 2018-05-30 04:00 A | 2.5d → 1d | 0% → 100% | 0d → none |  |  |
| 6 | Revisar DRE Preliminar | 2018-05-30 → 2018-05-30 09:00 A | 2018-05-31 → 2018-05-31 13:00 A | 1.38d → 1d | 0% → 100% | 0d → none |  |  |
| 7 | **Estimativa.Prel.Tam** | 2018-06-01 → 2018-06-01 09:00 A | 2018-06-03 → 2018-06-03 18:00 A |  | 0% → 100% | 0d → none |  |  |
| 8 | Estimar tamanho do projeto | 2018-06-01 → 2018-06-01 09:00 A | 2018-06-02 → 2018-06-02 13:00 A | 1.38d → 1d | 0% → 100% | 0d → none |  |  |
| 9 | Revisar Estimativa de Tamanho do projeto | 2018-06-02 → 2018-06-02 14:00 A | 2018-06-03 → 2018-06-03 18:00 A | 1.5d → 1d | 0% → 100% | 0d → none |  |  |
| 10 | **Estimativa.Prel.Crono** | 2018-06-04 → 2018-06-04 09:00 A | 2018-06-06 → 2018-06-06 18:00 A |  | 0% → 100% | 0d → none |  |  |
| 11 | Elaborar Cronograma Preliminar | 2018-06-04 → 2018-06-04 09:00 A | 2018-06-05 → 2018-06-05 13:00 A | 1.38d → 1d | 0% → 100% | 0d → none |  |  |
| 12 | Revisar Cronograma Preliminar | 2018-06-05 → 2018-06-05 14:00 A | 2018-06-06 → 2018-06-06 18:00 A | 1.5d → 1d | 0% → 100% | 0d → none |  |  |
| 13 | **Análise** | 2018-06-07 → 2018-06-07 00:00 A | 2018-06-21 → 2018-06-20 15:00 A (-1d) | 10.62d? → 9.62d? | 0% → 100% | 0d → none |  |  |
| 14 | Reunir com Fornecedor de Requisitos | 2018-06-07 → 2018-06-07 00:00 A | 2018-06-08 → 2018-06-08 03:00 A |  | 0% → 100% | 0d → none |  |  |
| 15 | **DRE** | 2018-06-08 → 2018-06-08 03:00 A | 2018-06-12 → 2018-06-12 18:00 A |  | 0% → 100% | 0d → none |  |  |
| 16 | Redigir DRE Definitivo | 2018-06-08 → 2018-06-08 03:00 A | 2018-06-12 → 2018-06-12 04:00 A |  | 0% → 100% | 0d → none |  |  |
| 17 | Revisar DRE Definitivo | 2018-06-12 → 2018-06-12 14:00 A | 2018-06-12 → 2018-06-12 18:00 A |  | 0% → 100% | 0d → none |  |  |
| 18 | **MRB** | 2018-06-13 → 2018-06-13 14:00 A | 2018-06-18 → 2018-06-18 02:00 A |  | 0% → 100% | 2.5d → none |  |  |
| 19 | Elaborar MRB | 2018-06-13 → 2018-06-13 14:00 A | 2018-06-17 → 2018-06-17 16:00 A |  | 0% → 100% | 2.5d → none |  |  |
| 20 | Revisar MRB | 2018-06-18 → 2018-06-18 00:00 A | 2018-06-18 → 2018-06-18 02:00 A |  | 0% → 100% | 3d → none |  |  |
| 21 | **Estimativa final** | 2018-06-13 → 2018-06-13 09:00 A | 2018-06-15 → 2018-06-15 11:00 A |  | 0% → 100% | 0.38d → none |  |  |
| 22 | Elaborar estimativa final | 2018-06-13 → 2018-06-13 09:00 A | 2018-06-15 → 2018-06-15 11:00 A |  | 0% → 100% | 0.38d → none |  |  |
| 23 | **Cronograma definitivo** | 2018-06-15 → 2018-06-15 11:00 A | 2018-06-21 → 2018-06-20 15:00 A (-1d) | 4.38d? → 3.38d? | 0% → 100% | 0.25d → none |  |  |
| 24 | Atualizar Cronograma | 2018-06-15 → 2018-06-15 11:00 A | 2018-06-16 → 2018-06-16 10:00 A |  | 0% → 100% | 0d → none |  |  |
| 25 | Revisar Cronograma | 2018-06-17 → 2018-06-16 14:00 A (-1d) | 2018-06-21 → 2018-06-20 15:00 A (-1d) |  | 0% → 100% | 0d → none |  |  |
| 26 | **Projeto** | 2018-06-21 → 2018-06-20 15:00 A (-1d) | 2018-06-26 → 2018-06-24 17:00 A (-2d) | 3.04d? → 2.38d? | 0% → 100% | 0.25d → none |  |  |
| 27 | **Diagrama de Classes** | 2018-06-21 → 2018-06-20 15:00 A (-1d) | 2018-06-24 → 2018-06-23 16:00 A (-1d) | 1.38d? → 2.38d? | 0% → 100% | 0.25d → none |  |  |
| 28 | Elaborar diagrama de Classes | 2018-06-21 → 2018-06-20 15:00 A (-1d) | 2018-06-22 → 2018-06-21 16:00 A (-1d) |  | 0% → 100% | 0.25d → none |  |  |
| 29 | Revisar Diagrama de Classes | 2018-06-23 → 2018-06-22 00:00 A (-1d) | 2018-06-23 → 2018-06-22 01:00 A (-1d) |  | 0% → 100% | 0d → none |  |  |
| 30 | Atualizar MRB | 2018-06-23 → 2018-06-22 14:00 A (-1d) | 2018-06-24 → 2018-06-23 16:00 A (-1d) |  | 0% → 100% | 0d → none |  |  |
| 31 | **Modelo Entidade Relacionamento** | 2018-06-24 → 2018-06-23 16:00 A (-1d) | 2018-06-26 → 2018-06-24 17:00 A (-2d) | 1.67d → 0d | 0% → 100% | 0.33d → none |  |  |
| 32 | Elaborar MER | 2018-06-24 → 2018-06-23 16:00 A (-1d) | 2018-06-25 → 2018-06-24 15:00 A (-1d) |  | 0% → 100% | 0.38d → none |  |  |
| 33 | Revisar MER | 2018-06-25 → 2018-06-24 15:00 A (-1d) | 2018-06-26 → 2018-06-24 17:00 A (-2d) |  | 0% → 100% | 0.33d → none |  |  |
| 34 | **Implementação** | 2018-06-26 → 2018-06-24 17:00 A (-2d) | 2018-07-27 → 2018-07-28 02:00 (+1d) | 22.33d? → 25d? | 0% → 22% |  |  |  |
| 35 | Estudo da ferramenta de desenvolvimento | 2018-06-26 → 2018-06-24 17:00 (-2d) | 2018-07-01 → 2018-06-29 09:20 (-2d) |  |  | 0d → 20.38d |  |  |
| 36 | **Release 01** | 2018-07-01 → 2018-06-29 14:00 A (-2d) | 2018-07-10 → 2018-07-08 13:00 (-2d) | 6.38d? → 5.5d? | 0% → 91% |  |  |  |
| 37 | **CRUDE Funcionário** | 2018-07-01 → 2018-06-29 14:00 A (-2d) | 2018-07-05 → 2018-07-03 18:00 A (-2d) | 4d → 2.5d | 0% → 100% | 0d → none |  |  |
| 38 | Implementar RFS01 | 2018-07-01 → 2018-06-29 14:00 A (-2d) | 2018-07-02 → 2018-06-30 15:00 A (-2d) |  | 0% → 100% | 0d → none |  |  |
| 39 | Implementar RFS02 | 2018-07-02 → 2018-06-30 15:00 A (-2d) | 2018-07-03 → 2018-07-01 16:00 A (-2d) |  | 0% → 100% | 0d → none |  |  |
| 40 | Implementar RFS03 | 2018-07-03 → 2018-07-01 16:00 A (-2d) | 2018-07-04 → 2018-07-02 17:00 A (-2d) |  | 0% → 100% | 0d → none |  |  |
| 41 | Implementar RFS04 | 2018-07-04 → 2018-07-02 17:00 A (-2d) | 2018-07-05 → 2018-07-03 18:00 A (-2d) |  | 0% → 100% | 0d → none |  |  |
| 42 | **CRUDE Usuário** | 2018-07-06 → 2018-07-04 09:00 A (-2d) | 2018-07-10 → 2018-07-08 13:00 A (-2d) | 2.38d? → 3d? | 0% → 100% | 11d → none |  |  |
| 43 | Implementar RFS05 | 2018-07-06 → 2018-07-04 09:00 A (-2d) | 2018-07-07 → 2018-07-05 10:00 A (-2d) |  | 0% → 100% | 10.12d → none |  |  |
| 44 | Implementar RFS06 | 2018-07-07 → 2018-07-05 10:00 A (-2d) | 2018-07-08 → 2018-07-06 11:00 A (-2d) |  | 0% → 100% | 10.12d → none |  |  |
| 45 | Implementar RFS07 | 2018-07-08 → 2018-07-06 11:00 A (-2d) | 2018-07-09 → 2018-07-07 12:00 A (-2d) |  | 0% → 100% | 11.25d → none |  |  |
| 46 | Implementar RFS08 | 2018-07-09 → 2018-07-07 12:00 A (-2d) | 2018-07-10 → 2018-07-08 13:00 A (-2d) |  | 0% → 100% | 12d → none |  |  |
| 47 | **Teste** | 2018-07-06 → 2018-07-04 00:00 (-2d) | 2018-07-06 → 2018-07-04 04:00 (-2d) |  |  |  |  |  |
| 48 | Testar CRUDE Funcionário | 2018-07-06 → 2018-07-04 00:00 (-2d) | 2018-07-06 → 2018-07-04 02:00 (-2d) |  |  |  |  |  |
| 49 | Testar CRUDE Usuário | 2018-07-06 → 2018-07-04 02:00 (-2d) | 2018-07-06 → 2018-07-04 04:00 (-2d) |  |  |  |  |  |
| 50 | **Release 02** | 2018-07-06 → 2018-07-04 04:00 (-2d) | 2018-07-15 → 2018-07-13 16:00 (-2d) | 6d? → 7.75d? |  |  |  |  |
| 51 | **CRUDE Cliente** | 2018-07-06 → 2018-07-04 04:00 (-2d) | 2018-07-10 → 2018-07-08 04:00 (-2d) | 2d? → 3d? |  |  |  |  |
| 52 | Implementar RFS 09 | 2018-07-06 → 2018-07-04 04:00 (-2d) | 2018-07-07 → 2018-07-05 04:00 (-2d) |  |  |  |  |  |
| 53 | Implementar RFS 10 | 2018-07-07 → 2018-07-05 04:00 (-2d) | 2018-07-08 → 2018-07-06 04:00 (-2d) |  |  |  |  |  |
| 54 | Implementar RFS 11 | 2018-07-08 → 2018-07-06 04:00 (-2d) | 2018-07-09 → 2018-07-07 04:00 (-2d) |  |  |  |  |  |
| 55 | Implementar RFS 12 | 2018-07-09 → 2018-07-07 04:00 (-2d) | 2018-07-10 → 2018-07-08 04:00 (-2d) |  |  |  |  |  |
| 56 | **CRUDE Fornecedor** | 2018-07-10 → 2018-07-08 14:00 (-2d) | 2018-07-15 → 2018-07-13 16:00 (-2d) | 3.5d → 4.75d |  | 8.5d → 0d |  |  |
| 57 | Implementar RFS 13 | 2018-07-10 → 2018-07-08 14:00 (-2d) | 2018-07-11 → 2018-07-09 15:00 (-2d) |  |  | 7.38d → 0d |  |  |
| 58 | Implementar RFS 14 | 2018-07-11 → 2018-07-09 15:00 (-2d) | 2018-07-12 → 2018-07-10 16:00 (-2d) |  |  | 7.25d → 0.12d |  |  |
| 59 | Implementar RFS 15 | 2018-07-12 → 2018-07-10 16:00 (-2d) | 2018-07-13 → 2018-07-11 17:00 (-2d) |  |  | 7.75d → 0.12d |  |  |
| 60 | Implementar RFS 16 | 2018-07-13 → 2018-07-11 17:00 (-2d) | 2018-07-15 → 2018-07-13 16:00 (-2d) |  |  | 7.75d → 10.25d |  |  |
| 61 | **Teste** | 2018-07-11 → 2018-07-12 09:00 (+1d) | 2018-07-11 → 2018-07-12 13:00 (+1d) |  |  |  |  |  |
| 62 | Teste CRUDE Cliente | 2018-07-11 → 2018-07-12 09:00 (+1d) | 2018-07-11 → 2018-07-12 11:00 (+1d) |  |  |  | 55 → 59 |  |
| 63 | Teste CRUDE Fornecedor | 2018-07-11 → 2018-07-12 11:00 (+1d) | 2018-07-11 → 2018-07-12 13:00 (+1d) |  |  |  |  |  |
| 64 | **Release 03** | 2018-07-12 → 2018-07-13 00:00 (+1d) | 2018-07-19 → 2018-07-20 16:00 (+1d) |  |  |  |  |  |
| 65 | **CRUDE Pedido** | 2018-07-12 → 2018-07-13 00:00 (+1d) | 2018-07-15 → 2018-07-16 05:00 (+1d) | 2d → 1d |  |  |  |  |
| 66 | Implementar RFS 17 | 2018-07-12 → 2018-07-13 00:00 (+1d) | 2018-07-12 → 2018-07-13 05:00 (+1d) |  |  |  |  |  |
| 67 | Implementar RFS 18 | 2018-07-13 → 2018-07-14 00:00 (+1d) | 2018-07-13 → 2018-07-14 05:00 (+1d) |  |  |  |  |  |
| 68 | Implementar RFS 19 | 2018-07-14 → 2018-07-15 00:00 (+1d) | 2018-07-14 → 2018-07-15 05:00 (+1d) |  |  |  |  |  |
| 69 | Implementar RFS 20 | 2018-07-15 → 2018-07-16 00:00 (+1d) | 2018-07-15 → 2018-07-16 05:00 (+1d) |  |  |  |  |  |
| 70 | **CRUDE Produto** | 2018-07-15 → 2018-07-16 09:00 (+1d) | 2018-07-19 → 2018-07-20 13:00 (+1d) | 3.38d → 4.38d |  |  |  |  |

| ID | Task | Start | Finish | Duration | Total float |
| --- | --- | --- | --- | --- | --- |
| 71 | Implementar RFS 21 | 2018-07-15 → 2018-07-16 09:00 (+1d) | 2018-07-16 → 2018-07-17 10:00 (+1d) |  |  |
| 72 | Implementar RFS 22 | 2018-07-16 → 2018-07-17 10:00 (+1d) | 2018-07-17 → 2018-07-18 11:00 (+1d) |  |  |
| 73 | Implementar RFS 23 | 2018-07-17 → 2018-07-18 11:00 (+1d) | 2018-07-18 → 2018-07-19 12:00 (+1d) |  |  |
| 74 | Implementar RFS 24 | 2018-07-18 → 2018-07-19 12:00 (+1d) | 2018-07-19 → 2018-07-20 13:00 (+1d) |  |  |
| 75 | **Teste** | 2018-07-15 → 2018-07-16 14:00 (+1d) | 2018-07-19 → 2018-07-20 16:00 (+1d) | 3.75d? → 4.25d? | 3.75d → 4.25d |
| 76 | Teste CRUDE Pedido | 2018-07-15 → 2018-07-16 14:00 (+1d) | 2018-07-15 → 2018-07-16 16:00 (+1d) |  | 8.75d → 9.25d |
| 77 | Teste CRUDE Produto | 2018-07-19 → 2018-07-20 14:00 (+1d) | 2018-07-19 → 2018-07-20 16:00 (+1d) |  |  |
| 78 | **Release 04** | 2018-07-19 → 2018-07-20 16:00 (+1d) | 2018-07-26 → 2018-07-27 11:00 (+1d) |  |  |
| 79 | Implementar RFS 25 | 2018-07-19 → 2018-07-20 16:00 (+1d) | 2018-07-20 → 2018-07-21 18:00 (+1d) |  |  |
| 80 | Implementar RFS 26 | 2018-07-21 → 2018-07-22 14:00 (+1d) | 2018-07-22 → 2018-07-23 16:00 (+1d) |  |  |
| 81 | Implementar RFS 27 | 2018-07-23 → 2018-07-24 00:00 (+1d) | 2018-07-24 → 2018-07-25 01:00 (+1d) |  |  |
| 82 | Implementar RFS 28 | 2018-07-24 → 2018-07-25 01:00 (+1d) | 2018-07-25 → 2018-07-26 02:00 (+1d) |  |  |
| 83 | Implementar RFS 29 | 2018-07-25 → 2018-07-26 09:00 (+1d) | 2018-07-26 → 2018-07-27 11:00 (+1d) |  |  |
| 84 | **Teste** | 2018-07-21 → 2018-07-22 09:00 (+1d) | 2018-07-27 → 2018-07-28 02:00 (+1d) | 4d? → 5d? |  |
| 85 | Testar RFS 25 | 2018-07-21 → 2018-07-22 09:00 (+1d) | 2018-07-21 → 2018-07-22 11:00 (+1d) |  | 3.25d → 4.25d |
| 86 | Testar RFS 26 | 2018-07-23 → 2018-07-24 09:00 (+1d) | 2018-07-23 → 2018-07-24 11:00 (+1d) |  |  |
| 87 | Testar RFS 27 | 2018-07-24 → 2018-07-25 14:00 (+1d) | 2018-07-24 → 2018-07-25 16:00 (+1d) |  |  |
| 88 | Testar RFS 28 | 2018-07-25 → 2018-07-26 14:00 (+1d) | 2018-07-25 → 2018-07-26 16:00 (+1d) |  |  |
| 89 | Testar RFS 29 | 2018-07-27 → 2018-07-28 00:00 (+1d) | 2018-07-27 → 2018-07-28 02:00 (+1d) |  |  |

## Version 3 (saved 2018-06-18, file Cronograma Projeto SCM versão 1.2.mpp)

Note of the change: Merge branch 'Release02'

Last finish 2018-07-28 → 2018-07-27 (-1d). Complete tasks 29 → 42.

Added:

| ID | Task | Duration | Start | Finish |
| --- | --- | --- | --- | --- |
| 34 | **Planejamento** | 0d | 2018-05-26 A | 2018-05-26 A |
| 35 | Fase de planejamento? | 1d | 2018-05-26 A | 2018-05-26 A |
| 92 | **Processo de monitoramento e controle** | 1d | 2018-05-30 | 2018-05-30 |
| 93 | Monitoramento e controle | 1d? | 2018-05-30 | 2018-05-30 |
| 94 | **Fase de fechamento** | 1d | 2018-05-30 | 2018-05-30 |
| 95 | Fechamento | 1d? | 2018-05-30 | 2018-05-30 |
| 96 | **Controle de mudanças** | 1d | 2018-05-30 | 2018-05-30 |
| 97 | Controle de mudanças | 1d? | 2018-05-30 | 2018-05-30 |

Changed:

| ID | Task | Start | Finish | Duration | Complete | Total float | Predecessors | Other |
| --- | --- | --- | --- | --- | --- | --- | --- | --- |
| 1 | **Projeto SCM** | 2018-05-26 00:00 A → 2018-05-26 A | 2018-07-28 02:00 → 2018-07-27 (-1d) | 45d? → 44d? | 56% → 67% |  |  | baseline start none → 2018-05-26; baseline finish none → 2018-07-27 |
| 2 | **Prospecção** | 2018-05-26 00:00 A → 2018-05-26 A | 2018-06-06 18:00 A → 2018-06-06 A |  |  |  |  | baseline start none → 2018-05-26; baseline finish none → 2018-06-06 |
| 3 | Estudar Dominio | 2018-05-26 00:00 A → 2018-05-26 A | 2018-05-27 03:00 A → 2018-05-27 A |  |  |  |  | constraint start no earlier than 2018-05-25 09:00 → start no earlier than 2018-05-25; baseline start none → 2018-05-26; baseline finish none → 2018-05-27 |
| 4 | Reunir com Fornecedor de Requisitos | 2018-05-27 03:00 A → 2018-05-27 A | 2018-05-29 01:00 A → 2018-05-29 A |  |  |  |  | baseline start none → 2018-05-27; baseline finish none → 2018-05-29 |
| 5 | Redigir DRE Preliminar | 2018-05-29 01:00 A → 2018-05-29 A | 2018-05-30 04:00 A → 2018-05-30 A |  |  |  |  | baseline start none → 2018-05-29; baseline finish none → 2018-05-30 |
| 6 | Revisar DRE Preliminar | 2018-05-30 09:00 A → 2018-05-30 A | 2018-05-31 13:00 A → 2018-05-31 A |  |  |  |  | baseline start none → 2018-05-30; baseline finish none → 2018-05-31 |
| 7 | **Estimativa.Prel.Tam** | 2018-06-01 09:00 A → 2018-06-01 A | 2018-06-03 18:00 A → 2018-06-03 A |  |  |  |  | baseline start none → 2018-06-01; baseline finish none → 2018-06-03 |
| 8 | Estimar tamanho do projeto | 2018-06-01 09:00 A → 2018-06-01 A | 2018-06-02 13:00 A → 2018-06-02 A |  |  |  |  | baseline start none → 2018-06-01; baseline finish none → 2018-06-02 |
| 9 | Revisar Estimativa de Tamanho do projeto | 2018-06-02 14:00 A → 2018-06-02 A | 2018-06-03 18:00 A → 2018-06-03 A |  |  |  |  | baseline start none → 2018-06-02; baseline finish none → 2018-06-03 |
| 10 | **Estimativa.Prel.Crono** | 2018-06-04 09:00 A → 2018-06-04 A | 2018-06-06 18:00 A → 2018-06-06 A |  |  |  |  | baseline start none → 2018-06-04; baseline finish none → 2018-06-06 |
| 11 | Elaborar Cronograma Preliminar | 2018-06-04 09:00 A → 2018-06-04 A | 2018-06-05 13:00 A → 2018-06-05 A |  |  |  |  | baseline start none → 2018-06-04; baseline finish none → 2018-06-05 |
| 12 | Revisar Cronograma Preliminar | 2018-06-05 14:00 A → 2018-06-05 A | 2018-06-06 18:00 A → 2018-06-06 A |  |  |  |  | baseline start none → 2018-06-05; baseline finish none → 2018-06-06 |
| 13 | **Análise** | 2018-06-07 00:00 A → 2018-06-07 A | 2018-06-20 15:00 A → 2018-06-21 A (+1d) | 9.62d? → 10.62d? |  |  |  | baseline start none → 2018-06-07; baseline finish none → 2018-06-21 |
| 14 | Reunir com Fornecedor de Requisitos | 2018-06-07 00:00 A → 2018-06-07 A | 2018-06-08 03:00 A → 2018-06-08 A | 1d → 1.12d |  |  |  | baseline start none → 2018-06-07; baseline finish none → 2018-06-08 |
| 15 | **DRE** | 2018-06-08 03:00 A → 2018-06-08 A | 2018-06-12 18:00 A → 2018-06-12 A |  |  |  |  | baseline start none → 2018-06-08; baseline finish none → 2018-06-12 |
| 16 | Redigir DRE Definitivo | 2018-06-08 03:00 A → 2018-06-08 A | 2018-06-12 04:00 A → 2018-06-12 A |  |  |  |  | baseline start none → 2018-06-08; baseline finish none → 2018-06-12 |
| 17 | Revisar DRE Definitivo | 2018-06-12 14:00 A → 2018-06-12 A | 2018-06-12 18:00 A → 2018-06-12 A |  |  |  |  | baseline start none → 2018-06-12; baseline finish none → 2018-06-12 |
| 18 | **MRB** | 2018-06-13 14:00 A → 2018-06-13 A | 2018-06-18 02:00 A → 2018-06-18 A |  |  |  |  | baseline start none → 2018-06-13; baseline finish none → 2018-06-18 |
| 19 | Elaborar MRB | 2018-06-13 14:00 A → 2018-06-13 A | 2018-06-17 16:00 A → 2018-06-17 A |  |  |  |  | baseline start none → 2018-06-13; baseline finish none → 2018-06-17 |
| 20 | Revisar MRB | 2018-06-18 00:00 A → 2018-06-18 A | 2018-06-18 02:00 A → 2018-06-18 A |  |  |  |  | baseline start none → 2018-06-18; baseline finish none → 2018-06-18 |
| 21 | **Estimativa final** | 2018-06-13 09:00 A → 2018-06-13 A | 2018-06-15 11:00 A → 2018-06-15 A |  |  |  |  | baseline start none → 2018-06-13; baseline finish none → 2018-06-15 |
| 22 | Elaborar estimativa final | 2018-06-13 09:00 A → 2018-06-13 A | 2018-06-15 11:00 A → 2018-06-15 A |  |  |  |  | baseline start none → 2018-06-13; baseline finish none → 2018-06-15 |
| 23 | **Cronograma definitivo** | 2018-06-15 11:00 A → 2018-06-15 A | 2018-06-20 15:00 A → 2018-06-21 A (+1d) | 3.38d? → 4.38d? |  |  |  | baseline start none → 2018-06-15; baseline finish none → 2018-06-21 |
| 24 | Atualizar Cronograma | 2018-06-15 11:00 A → 2018-06-15 A | 2018-06-16 10:00 A → 2018-06-16 A |  |  |  |  | baseline start none → 2018-06-15; baseline finish none → 2018-06-16 |
| 25 | Revisar Cronograma | 2018-06-16 14:00 A → 2018-06-17 A (+1d) | 2018-06-20 15:00 A → 2018-06-21 A (+1d) |  |  |  |  | baseline start none → 2018-06-17; baseline finish none → 2018-06-21 |
| 26 | **Projeto** | 2018-06-20 15:00 A → 2018-06-21 A (+1d) | 2018-06-24 17:00 A → 2018-06-26 A (+2d) | 2.38d? → 3.04d? |  |  |  | baseline start none → 2018-06-21; baseline finish none → 2018-06-26 |
| 27 | **Diagrama de Classes** | 2018-06-20 15:00 A → 2018-06-21 A (+1d) | 2018-06-23 16:00 A → 2018-06-24 A (+1d) | 2.38d? → 1.38d? |  |  |  | baseline start none → 2018-06-21; baseline finish none → 2018-06-24 |
| 28 | Elaborar diagrama de Classes | 2018-06-20 15:00 A → 2018-06-21 A (+1d) | 2018-06-21 16:00 A → 2018-06-22 A (+1d) |  |  |  |  | baseline start none → 2018-06-21; baseline finish none → 2018-06-22 |
| 29 | Revisar Diagrama de Classes | 2018-06-22 00:00 A → 2018-06-23 A (+1d) | 2018-06-22 01:00 A → 2018-06-23 A (+1d) |  |  |  |  | baseline start none → 2018-06-23; baseline finish none → 2018-06-23 |
| 30 | Atualizar MRB | 2018-06-22 14:00 A → 2018-06-23 A (+1d) | 2018-06-23 16:00 A → 2018-06-24 A (+1d) |  |  |  |  | baseline start none → 2018-06-23; baseline finish none → 2018-06-24 |
| 31 | **Modelo Entidade Relacionamento** | 2018-06-23 16:00 A → 2018-06-24 A (+1d) | 2018-06-24 17:00 A → 2018-06-26 A (+2d) | 0d → 1.67d |  |  |  | baseline start none → 2018-06-24; baseline finish none → 2018-06-26 |
| 32 | Elaborar MER | 2018-06-23 16:00 A → 2018-06-24 A (+1d) | 2018-06-24 15:00 A → 2018-06-25 A (+1d) |  |  |  |  | baseline start none → 2018-06-24; baseline finish none → 2018-06-25 |
| 33 | Revisar MER | 2018-06-24 15:00 A → 2018-06-25 A (+1d) | 2018-06-24 17:00 A → 2018-06-26 A (+2d) |  |  |  |  | baseline start none → 2018-06-25; baseline finish none → 2018-06-26 |
| 36 | **Implementação** | 2018-06-24 17:00 A → 2018-06-26 A (+2d) | 2018-07-28 02:00 → 2018-07-27 (-1d) | 25d? → 22.33d? | 22% → 48% |  |  | baseline start none → 2018-06-26; baseline finish none → 2018-07-27 |
| 37 | Estudo da ferramenta de desenvolvimento | 2018-06-24 17:00 → 2018-06-26 (+2d) | 2018-06-29 09:20 → 2018-07-01 (+2d) |  |  | 20.38d → 18.33d |  | baseline start none → 2018-06-26; baseline finish none → 2018-07-01 |
| 38 | **Release 01** | 2018-06-29 14:00 A → 2018-07-01 A (+2d) | 2018-07-08 13:00 → 2018-07-10 A (+2d) | 5.5d? → 6.38d? | 91% → 100% | 0d → none |  | baseline start none → 2018-07-01; baseline finish none → 2018-07-10 |
| 39 | **CRUDE Funcionário** | 2018-06-29 14:00 A → 2018-07-01 A (+2d) | 2018-07-03 18:00 A → 2018-07-05 A (+2d) | 2.5d → 4d |  |  |  | baseline start none → 2018-07-01; baseline finish none → 2018-07-05 |
| 40 | Implementar RFS01 | 2018-06-29 14:00 A → 2018-07-01 A (+2d) | 2018-06-30 15:00 A → 2018-07-02 A (+2d) |  |  |  |  | baseline start none → 2018-07-01; baseline finish none → 2018-07-02 |
| 41 | Implementar RFS02 | 2018-06-30 15:00 A → 2018-07-02 A (+2d) | 2018-07-01 16:00 A → 2018-07-03 A (+2d) |  |  |  |  | baseline start none → 2018-07-02; baseline finish none → 2018-07-03 |
| 42 | Implementar RFS03 | 2018-07-01 16:00 A → 2018-07-03 A (+2d) | 2018-07-02 17:00 A → 2018-07-04 A (+2d) |  |  |  |  | baseline start none → 2018-07-03; baseline finish none → 2018-07-04 |
| 43 | Implementar RFS04 | 2018-07-02 17:00 A → 2018-07-04 A (+2d) | 2018-07-03 18:00 A → 2018-07-05 A (+2d) |  |  |  |  | baseline start none → 2018-07-04; baseline finish none → 2018-07-05 |
| 44 | **CRUDE Usuário** | 2018-07-04 09:00 A → 2018-07-06 A (+2d) | 2018-07-08 13:00 A → 2018-07-10 A (+2d) | 3d? → 2.38d? |  |  |  | baseline start none → 2018-07-06; baseline finish none → 2018-07-10 |
| 45 | Implementar RFS05 | 2018-07-04 09:00 A → 2018-07-06 A (+2d) | 2018-07-05 10:00 A → 2018-07-07 A (+2d) |  |  |  |  | baseline start none → 2018-07-06; baseline finish none → 2018-07-07 |
| 46 | Implementar RFS06 | 2018-07-05 10:00 A → 2018-07-07 A (+2d) | 2018-07-06 11:00 A → 2018-07-08 A (+2d) |  |  |  |  | baseline start none → 2018-07-07; baseline finish none → 2018-07-08 |
| 47 | Implementar RFS07 | 2018-07-06 11:00 A → 2018-07-08 A (+2d) | 2018-07-07 12:00 A → 2018-07-09 A (+2d) |  |  |  |  | baseline start none → 2018-07-08; baseline finish none → 2018-07-09 |
| 48 | Implementar RFS08 | 2018-07-07 12:00 A → 2018-07-09 A (+2d) | 2018-07-08 13:00 A → 2018-07-10 A (+2d) |  |  |  |  | baseline start none → 2018-07-09; baseline finish none → 2018-07-10 |
| 49 | **Teste** | 2018-07-04 00:00 → 2018-07-06 A (+2d) | 2018-07-04 04:00 → 2018-07-06 A (+2d) |  | 0% → 100% | 0d → none |  | baseline start none → 2018-07-06; baseline finish none → 2018-07-06 |
| 50 | Testar CRUDE Funcionário | 2018-07-04 00:00 → 2018-07-06 A (+2d) | 2018-07-04 02:00 → 2018-07-06 A (+2d) |  | 0% → 100% | 0d → none |  | baseline start none → 2018-07-06; baseline finish none → 2018-07-06 |
| 51 | Testar CRUDE Usuário | 2018-07-04 02:00 → 2018-07-06 A (+2d) | 2018-07-04 04:00 → 2018-07-06 A (+2d) |  | 0% → 100% | 0d → none |  | baseline start none → 2018-07-06; baseline finish none → 2018-07-06 |
| 52 | **Release 02** | 2018-07-04 04:00 → 2018-07-06 A (+2d) | 2018-07-13 16:00 → 2018-07-15 A (+2d) | 7.75d? → 6d? | 0% → 100% | 1d → none |  | baseline start none → 2018-07-06; baseline finish none → 2018-07-15 |
| 53 | **CRUDE Cliente** | 2018-07-04 04:00 → 2018-07-06 A (+2d) | 2018-07-08 04:00 → 2018-07-10 A (+2d) | 3d? → 2d? | 0% → 100% | 0d → none |  | baseline start none → 2018-07-06; baseline finish none → 2018-07-10 |
| 54 | Implementar RFS 09 | 2018-07-04 04:00 → 2018-07-06 A (+2d) | 2018-07-05 04:00 → 2018-07-07 A (+2d) |  | 0% → 100% | 0d → none |  | baseline start none → 2018-07-06; baseline finish none → 2018-07-07 |
| 55 | Implementar RFS 10 | 2018-07-05 04:00 → 2018-07-07 A (+2d) | 2018-07-06 04:00 → 2018-07-08 A (+2d) |  | 0% → 100% | 0d → none |  | baseline start none → 2018-07-07; baseline finish none → 2018-07-08 |
| 56 | Implementar RFS 11 | 2018-07-06 04:00 → 2018-07-08 A (+2d) | 2018-07-07 04:00 → 2018-07-09 A (+2d) |  | 0% → 100% | 0d → none |  | baseline start none → 2018-07-08; baseline finish none → 2018-07-09 |
| 57 | Implementar RFS 12 | 2018-07-07 04:00 → 2018-07-09 A (+2d) | 2018-07-08 04:00 → 2018-07-10 A (+2d) |  | 0% → 100% | 0d → none |  | baseline start none → 2018-07-09; baseline finish none → 2018-07-10 |
| 58 | **CRUDE Fornecedor** | 2018-07-08 14:00 → 2018-07-10 A (+2d) | 2018-07-13 16:00 → 2018-07-15 A (+2d) | 4.75d → 3.5d | 0% → 100% | 0d → none |  | baseline start none → 2018-07-10; baseline finish none → 2018-07-15 |
| 59 | Implementar RFS 13 | 2018-07-08 14:00 → 2018-07-10 A (+2d) | 2018-07-09 15:00 → 2018-07-11 A (+2d) |  | 0% → 100% | 0d → none |  | baseline start none → 2018-07-10; baseline finish none → 2018-07-11 |
| 60 | Implementar RFS 14 | 2018-07-09 15:00 → 2018-07-11 A (+2d) | 2018-07-10 16:00 → 2018-07-12 A (+2d) |  | 0% → 100% | 0.12d → none |  | baseline start none → 2018-07-11; baseline finish none → 2018-07-12 |
| 61 | Implementar RFS 15 | 2018-07-10 16:00 → 2018-07-12 A (+2d) | 2018-07-11 17:00 → 2018-07-13 A (+2d) |  | 0% → 100% | 0.12d → none |  | baseline start none → 2018-07-12; baseline finish none → 2018-07-13 |
| 62 | Implementar RFS 16 | 2018-07-11 17:00 → 2018-07-13 A (+2d) | 2018-07-13 16:00 → 2018-07-15 A (+2d) |  | 0% → 100% | 10.25d → none |  | baseline start none → 2018-07-13; baseline finish none → 2018-07-15 |
| 63 | **Teste** | 2018-07-12 09:00 → 2018-07-11 A (-1d) | 2018-07-12 13:00 → 2018-07-11 A (-1d) |  | 0% → 100% | 0d → none |  | baseline start none → 2018-07-11; baseline finish none → 2018-07-11 |
| 64 | Teste CRUDE Cliente | 2018-07-12 09:00 → 2018-07-11 A (-1d) | 2018-07-12 11:00 → 2018-07-11 A (-1d) |  | 0% → 100% | 0d → none | 61 → 57 | baseline start none → 2018-07-11; baseline finish none → 2018-07-11 |
| 65 | Teste CRUDE Fornecedor | 2018-07-12 11:00 → 2018-07-11 A (-1d) | 2018-07-12 13:00 → 2018-07-11 A (-1d) |  | 0% → 100% | 0d → none |  | baseline start none → 2018-07-11; baseline finish none → 2018-07-11 |
| 66 | **Release 03** | 2018-07-13 00:00 → 2018-07-12 (-1d) | 2018-07-20 16:00 → 2018-07-19 (-1d) |  |  |  |  | baseline start none → 2018-07-12; baseline finish none → 2018-07-19 |
| 67 | **CRUDE Pedido** | 2018-07-13 00:00 → 2018-07-12 (-1d) | 2018-07-16 05:00 → 2018-07-15 (-1d) | 1d → 2d |  |  |  | baseline start none → 2018-07-12; baseline finish none → 2018-07-15 |
| 68 | Implementar RFS 17 | 2018-07-13 00:00 → 2018-07-12 (-1d) | 2018-07-13 05:00 → 2018-07-12 (-1d) |  |  |  |  | baseline start none → 2018-07-12; baseline finish none → 2018-07-12 |
| 69 | Implementar RFS 18 | 2018-07-14 00:00 → 2018-07-13 (-1d) | 2018-07-14 05:00 → 2018-07-13 (-1d) |  |  |  |  | baseline start none → 2018-07-13; baseline finish none → 2018-07-13 |
| 70 | Implementar RFS 19 | 2018-07-15 00:00 → 2018-07-14 (-1d) | 2018-07-15 05:00 → 2018-07-14 (-1d) |  |  |  |  | baseline start none → 2018-07-14; baseline finish none → 2018-07-14 |
| 71 | Implementar RFS 20 | 2018-07-16 00:00 → 2018-07-15 (-1d) | 2018-07-16 05:00 → 2018-07-15 (-1d) |  |  |  |  | baseline start none → 2018-07-15; baseline finish none → 2018-07-15 |
| 72 | **CRUDE Produto** | 2018-07-16 09:00 → 2018-07-15 (-1d) | 2018-07-20 13:00 → 2018-07-19 (-1d) | 4.38d → 3.38d |  |  |  | baseline start none → 2018-07-15; baseline finish none → 2018-07-19 |

| ID | Task | Start | Finish | Duration | Total float | Other |
| --- | --- | --- | --- | --- | --- | --- |
| 73 | Implementar RFS 21 | 2018-07-16 09:00 → 2018-07-15 (-1d) | 2018-07-17 10:00 → 2018-07-16 (-1d) |  |  | baseline start none → 2018-07-15; baseline finish none → 2018-07-16 |
| 74 | Implementar RFS 22 | 2018-07-17 10:00 → 2018-07-16 (-1d) | 2018-07-18 11:00 → 2018-07-17 (-1d) |  |  | baseline start none → 2018-07-16; baseline finish none → 2018-07-17 |
| 75 | Implementar RFS 23 | 2018-07-18 11:00 → 2018-07-17 (-1d) | 2018-07-19 12:00 → 2018-07-18 (-1d) |  |  | baseline start none → 2018-07-17; baseline finish none → 2018-07-18 |
| 76 | Implementar RFS 24 | 2018-07-19 12:00 → 2018-07-18 (-1d) | 2018-07-20 13:00 → 2018-07-19 (-1d) |  |  | baseline start none → 2018-07-18; baseline finish none → 2018-07-19 |
| 77 | **Teste** | 2018-07-16 14:00 → 2018-07-15 (-1d) | 2018-07-20 16:00 → 2018-07-19 (-1d) | 4.25d? → 3.75d? | 4.25d → 3.75d | baseline start none → 2018-07-15; baseline finish none → 2018-07-19 |
| 78 | Teste CRUDE Pedido | 2018-07-16 14:00 → 2018-07-15 (-1d) | 2018-07-16 16:00 → 2018-07-15 (-1d) |  | 9.25d → 8.75d | baseline start none → 2018-07-15; baseline finish none → 2018-07-15 |
| 79 | Teste CRUDE Produto | 2018-07-20 14:00 → 2018-07-19 (-1d) | 2018-07-20 16:00 → 2018-07-19 (-1d) |  |  | baseline start none → 2018-07-19; baseline finish none → 2018-07-19 |
| 80 | **Release 04** | 2018-07-20 16:00 → 2018-07-19 (-1d) | 2018-07-27 11:00 → 2018-07-26 (-1d) |  |  | baseline start none → 2018-07-19; baseline finish none → 2018-07-26 |
| 81 | Implementar RFS 25 | 2018-07-20 16:00 → 2018-07-19 (-1d) | 2018-07-21 18:00 → 2018-07-20 (-1d) |  |  | baseline start none → 2018-07-19; baseline finish none → 2018-07-20 |
| 82 | Implementar RFS 26 | 2018-07-22 14:00 → 2018-07-21 (-1d) | 2018-07-23 16:00 → 2018-07-22 (-1d) |  |  | baseline start none → 2018-07-21; baseline finish none → 2018-07-22 |
| 83 | Implementar RFS 27 | 2018-07-24 00:00 → 2018-07-23 (-1d) | 2018-07-25 01:00 → 2018-07-24 (-1d) |  |  | baseline start none → 2018-07-23; baseline finish none → 2018-07-24 |
| 84 | Implementar RFS 28 | 2018-07-25 01:00 → 2018-07-24 (-1d) | 2018-07-26 02:00 → 2018-07-25 (-1d) |  |  | baseline start none → 2018-07-24; baseline finish none → 2018-07-25 |
| 85 | Implementar RFS 29 | 2018-07-26 09:00 → 2018-07-25 (-1d) | 2018-07-27 11:00 → 2018-07-26 (-1d) |  |  | baseline start none → 2018-07-25; baseline finish none → 2018-07-26 |
| 86 | **Teste** | 2018-07-22 09:00 → 2018-07-21 (-1d) | 2018-07-28 02:00 → 2018-07-27 (-1d) | 5d? → 4d? |  | baseline start none → 2018-07-21; baseline finish none → 2018-07-27 |
| 87 | Testar RFS 25 | 2018-07-22 09:00 → 2018-07-21 (-1d) | 2018-07-22 11:00 → 2018-07-21 (-1d) |  | 4.25d → 3.25d | baseline start none → 2018-07-21; baseline finish none → 2018-07-21 |
| 88 | Testar RFS 26 | 2018-07-24 09:00 → 2018-07-23 (-1d) | 2018-07-24 11:00 → 2018-07-23 (-1d) |  |  | baseline start none → 2018-07-23; baseline finish none → 2018-07-23 |
| 89 | Testar RFS 27 | 2018-07-25 14:00 → 2018-07-24 (-1d) | 2018-07-25 16:00 → 2018-07-24 (-1d) |  |  | baseline start none → 2018-07-24; baseline finish none → 2018-07-24 |
| 90 | Testar RFS 28 | 2018-07-26 14:00 → 2018-07-25 (-1d) | 2018-07-26 16:00 → 2018-07-25 (-1d) |  |  | baseline start none → 2018-07-25; baseline finish none → 2018-07-25 |
| 91 | Testar RFS 29 | 2018-07-28 00:00 → 2018-07-27 (-1d) | 2018-07-28 02:00 → 2018-07-27 (-1d) |  |  | baseline start none → 2018-07-27; baseline finish none → 2018-07-27 |

## Version 4 (saved 2018-06-25, file Cronograma Projeto SCM versão 1.3.mpp)

Note of the change: Add cronograma 1.3

Last finish stays 2018-07-27. Complete tasks 42 → 23.

Changed:

| ID | Task | Start | Finish | Duration | Complete | Total float |
| --- | --- | --- | --- | --- | --- | --- |
| 1 | **Projeto SCM** |  |  |  | 67% → 47% |  |
| 36 | **Implementação** | 2018-06-26 A → 2018-06-30 A (+4d) |  | 22.33d? → 19d? | 48% → 9% |  |
| 37 | Estudo da ferramenta de desenvolvimento | 2018-06-26 → 2018-06-30 A (+4d) |  |  | 0% → 100% | 18.33d → none |
| 38 | **Release 01** |  | 2018-07-10 A → 2018-07-10 |  | 100% → 5% | none → 12d |
| 39 | **CRUDE Funcionário** |  | 2018-07-05 A → 2018-07-05 |  | 100% → 5% | none → 0d |
| 40 | Implementar RFS01 |  | 2018-07-02 A → 2018-07-02 |  | 100% → 5% | none → 0.03d |
| 41 | Implementar RFS02 |  | 2018-07-03 A → 2018-07-03 |  | 100% → 5% | none → 0.03d |
| 42 | Implementar RFS03 |  | 2018-07-04 A → 2018-07-04 |  | 100% → 5% | none → 0.03d |
| 43 | Implementar RFS04 |  | 2018-07-05 A → 2018-07-05 |  | 100% → 5% | none → 0d |
| 44 | **CRUDE Usuário** |  | 2018-07-10 A → 2018-07-10 |  | 100% → 4% | none → 12d |
| 45 | Implementar RFS05 |  | 2018-07-07 A → 2018-07-07 |  | 100% → 4% | none → 0d |
| 46 | Implementar RFS06 |  | 2018-07-08 A → 2018-07-08 |  | 100% → 4% | none → 0d |
| 47 | Implementar RFS07 |  | 2018-07-09 A → 2018-07-09 |  | 100% → 4% | none → 1d |
| 48 | Implementar RFS08 |  | 2018-07-10 A → 2018-07-10 |  | 100% → 4% | none → 12d |
| 49 | **Teste** |  | 2018-07-06 A → 2018-07-06 |  | 100% → 8% | none → 0d |
| 50 | Testar CRUDE Funcionário |  | 2018-07-06 A → 2018-07-06 |  | 100% → 8% | none → 0d |
| 51 | Testar CRUDE Usuário |  | 2018-07-06 A → 2018-07-06 |  | 100% → 8% | none → 0d |
| 52 | **Release 02** |  | 2018-07-15 A → 2018-07-15 |  | 100% → 5% | none → 9d |
| 53 | **CRUDE Cliente** |  | 2018-07-10 A → 2018-07-10 |  | 100% → 5% | none → 0d |
| 54 | Implementar RFS 09 |  | 2018-07-07 A → 2018-07-07 |  | 100% → 5% | none → 0d |
| 55 | Implementar RFS 10 |  | 2018-07-08 A → 2018-07-08 |  | 100% → 5% | none → 0d |
| 56 | Implementar RFS 11 |  | 2018-07-09 A → 2018-07-09 |  | 100% → 5% | none → 0d |
| 57 | Implementar RFS 12 |  | 2018-07-10 A → 2018-07-10 |  | 100% → 5% | none → 0d |
| 58 | **CRUDE Fornecedor** |  | 2018-07-15 A → 2018-07-15 |  | 100% → 4% | none → 9d |
| 59 | Implementar RFS 13 |  | 2018-07-11 A → 2018-07-11 |  | 100% → 4% | none → 0.03d |
| 60 | Implementar RFS 14 |  | 2018-07-12 A → 2018-07-12 |  | 100% → 4% | none → 0.03d |
| 61 | Implementar RFS 15 |  | 2018-07-13 A → 2018-07-13 |  | 100% → 4% | none → 0.12d |
| 62 | Implementar RFS 16 |  | 2018-07-15 A → 2018-07-15 |  | 100% → 4% | none → 9d |
| 63 | **Teste** |  | 2018-07-11 A → 2018-07-11 |  | 100% → 8% | none → 0d |
| 64 | Teste CRUDE Cliente |  | 2018-07-11 A → 2018-07-11 |  | 100% → 8% | none → 0.12d |
| 65 | Teste CRUDE Fornecedor |  | 2018-07-11 A → 2018-07-11 |  | 100% → 8% | none → 0d |
| 66 | **Release 03** | 2018-07-12 A |  |  | 0% → 5% | 0d → 5.25d |
| 67 | **CRUDE Pedido** | 2018-07-12 A |  |  | 0% → 5% |  |
| 68 | Implementar RFS 17 | 2018-07-12 A |  |  | 0% → 5% | 0d → 1d |
| 69 | Implementar RFS 18 | 2018-07-13 A |  |  | 0% → 5% | 0d → 1d |
| 70 | Implementar RFS 19 | 2018-07-14 A |  |  | 0% → 5% |  |
| 71 | Implementar RFS 20 | 2018-07-15 A |  |  | 0% → 5% |  |
| 72 | **CRUDE Produto** | 2018-07-15 A |  |  | 0% → 4% |  |
| 73 | Implementar RFS 21 | 2018-07-15 A |  |  | 0% → 4% | 0d → 0.03d |
| 74 | Implementar RFS 22 | 2018-07-16 A |  |  | 0% → 4% | 0d → 0.03d |
| 75 | Implementar RFS 23 | 2018-07-17 A |  |  | 0% → 4% |  |
| 76 | Implementar RFS 24 | 2018-07-18 A |  |  | 0% → 4% |  |
| 77 | **Teste** | 2018-07-15 A |  |  | 0% → 8% | 3.75d → 5.25d |
| 78 | Teste CRUDE Pedido | 2018-07-15 A |  |  | 0% → 8% | 8.75d → 9d |
| 79 | Teste CRUDE Produto | 2018-07-19 A |  |  | 0% → 8% |  |
